# 项目进度计划

Schedule from a web Gantt chart, 2024-05-29 to 2029-11-28.
Every day is a working day

## Schedule

| ID | WBS | Task | Duration | Start | Finish |
| --- | --- | --- | --- | --- | --- |
| 2 | 1 | **签订合同到安装调试 6个月** | 184d | 2024-05-29 | 2024-11-28 |
| 3 | 1.1 | 签合同 | 3d | 2024-05-29 | 2024-05-31 |
| 4 | 1.2 | 设备生产 | 30d | 2024-06-01 | 2024-06-30 |
| 5 | 1.3 | 勘察 | 15d | 2024-06-03 | 2024-06-17 |
| 6 | 1.4 | 施工方案设计 | 21d | 2024-06-18 | 2024-07-08 |
| 7 | 1.5 | 出厂验收 | 3d | 2024-06-28 | 2024-06-30 |
| 8 | 1.6 | 运输 | 10d | 2024-07-01 | 2024-07-10 |
| 9 | 1.7 | **安装调试** | 141d | 2024-07-11 | 2024-11-28 |
| 10 | 1.7.1 | 工程组1 | 127d | 2024-07-11 | 2024-11-14 |
| 11 | 1.7.2 | 工程组2 | 127d | 2024-07-11 | 2024-11-14 |
| 12 | 1.7.3 | 工程组3 | 127d | 2024-07-11 | 2024-11-14 |
| 13 | 1.7.4 | 工程组4 | 127d | 2024-07-11 | 2024-11-14 |
| 14 | 1.7.5 | 系统联调 | 14d | 2024-11-15 | 2024-11-28 |
| 15 | 2 | **试运行到验收结束 8个月** | 242d | 2024-11-29 | 2025-07-28 |
| 16 | 2.1 | 试运行 | 242d | 2024-11-29 | 2025-07-28 |
| 17 | 2.2 | 比测 | 90d | 2024-12-29 | 2025-03-28 |
| 18 | 2.3 | 验收 | 3d | 2025-07-26 | 2025-07-28 |
| 19 | 3 | 质保 | 1584d | 2025-07-29 | 2029-11-28 |
| 20 | 4 | 高频地波雷达安装调试 | 1d | 2024-05-29 | 2024-05-29 |
| 21 | 5 | 自动气象站安装调试 | 1d | 2024-05-29 | 2024-05-29 |
| 22 | 6 | 视频监控安装调试 | 1d | 2024-05-29 | 2024-05-29 |
| 23 | 7 | 北斗终端调试接入 | 1d | 2024-05-29 | 2024-05-29 |
